# Planificación

Schedule from MS Project, 2014-03-18 to 2015-04-18, A marks actual dates.

## Calendars

- Estándar: Mon-Sun 09:00-13:00, 15:00-19:00. Exceptions (off unless hours are given): 2014-06-28 09:00-13:00, 15:00-19:00, 2014-10-25 09:00-13:00, 15:00-19:00, 2014-11-29 09:00-13:00, 15:00-19:00, 2015-01-03 09:00-13:00, 15:00-19:00, 2015-01-10 09:00-13:00, 15:00-19:00, 2015-02-14 09:00-13:00, 15:00-19:00.

## Resources

| Resource |
| --- |
| Facu |
| Paula |
| Florencia |
| Antonio |

## Schedule

| ID | WBS | Task | Type | Duration | Start | Finish | Predecessors | Complete | Constraint | Resources | Work | Actual work |
| --- | --- | --- | --- | --- | --- | --- | --- | --- | --- | --- | --- | --- |
| 1 | 1 | **Sprint 0** |  | 78d | 2014-03-18 A | 2014-06-03 A |  | 100% |  |  | 5800h | 5800h |
| 2 | 1.1 | **Realizar Propuesta Inicial** |  | 22d | 2014-03-18 A | 2014-04-08 A |  | 100% |  | Antonio; Facu; Florencia; Paula | 1344h | 1344h |
| 3 | 1.1.1 | Analizar la problematica y su contexto | manual | 7d | 2014-03-18 A | 2014-03-26 A |  | 100% | start no earlier than 2014-03-31 | Antonio; Facu; Florencia; Paula | 224h | 224h |
| 4 | 1.1.2 | Analizar viabilidad del proyecto | manual | 7d | 2014-03-18 A | 2014-03-26 A |  | 100% | start no earlier than 2014-03-31 | Antonio; Facu; Florencia; Paula | 224h | 224h |
| 5 | 1.1.3 | Definir propuesta de solucion | manual | 7d | 2014-03-18 A | 2014-03-26 A |  | 100% | start no earlier than 2014-03-31 | Antonio; Facu; Florencia; Paula | 224h | 224h |
| 6 | 1.1.4 | Preparar presentación | manual | 4d | 2014-03-31 A | 2014-04-03 A | 3, 4, 5 | 100% |  | Antonio; Facu; Florencia; Paula | 128h | 128h |
| 7 | 1.1.5 | Exponer | manual | 1d | 2014-04-08 A | 2014-04-08 A |  | 100% |  | Antonio; Facu; Florencia; Paula | 32h | 32h |
| 8 | 1.2 | **Realizar Calendarización** |  | 17d | 2014-04-15 A | 2014-05-07 A |  | 100% |  | Antonio; Facu; Florencia; Paula | 920h | 920h |
| 9 | 1.2.1 | Armar WBS | manual | 7d | 2014-04-15 A | 2014-04-23 A |  | 100% |  | Antonio; Facu; Florencia; Paula | 224h | 224h |
| 10 | 1.2.2 | Correccion WBS |  | 2d | 2014-04-24 A | 2014-04-25 A | 9 | 100% |  | Antonio; Facu; Florencia; Paula | 64h | 64h |
| 11 | 1.2.3 | Armar calendario | manual | 7d | 2014-04-28 A | 2014-05-06 A | 10 | 100% |  | Antonio; Facu; Florencia; Paula | 224h | 224h |
| 12 | 1.3 | **Realizar Estudio Inicial** |  | 32d | 2014-04-08 A | 2014-05-09 A | 2 | 100% |  | Antonio; Facu; Florencia; Paula | 2080h | 2080h |
| 13 | 1.3.1 | Analizar la problematica y su contexto |  | 14d | 2014-04-09 A | 2014-04-28 A |  | 100% |  | Antonio; Facu; Florencia; Paula | 448h | 448h |
| 14 | 1.3.2 | Analizar soluciones existentes en el mercado |  | 2d | 2014-04-09 A | 2014-04-10 A |  | 100% |  | Antonio; Facu; Florencia; Paula | 64h | 64h |
| 15 | 1.3.3 | Definir alcances |  | 7d | 2014-04-09 A | 2014-04-17 A |  | 100% |  | Antonio; Facu; Florencia; Paula | 224h | 224h |
| 16 | 1.3.4 | Realizar analisis de Factibilidad | manual | 1d | 2014-04-08 A | 2014-04-09 A |  | 100% |  | Antonio; Facu; Florencia; Paula | 32h | 32h |
| 17 | 1.3.5 | Realizar Encuestas |  | 10d | 2014-04-28 A | 2014-05-09 A |  | 100% | finish no earlier than 2014-05-09 | Antonio; Facu; Florencia; Paula | 320h | 320h |
| 18 | 1.3.6 | Estudiar dominio | manual | 7d | 2014-04-08 A | 2014-04-16 A |  | 100% |  | Antonio; Facu; Florencia; Paula | 224h | 224h |
| 19 | 1.4 | Realizar plan de configuración | manual | 7d | 2014-05-07 A | 2014-05-13 A |  | 100% |  | Florencia | 56h | 56h |
| 20 | 1.5 | **Realizar Plan de Riesgos** |  | 8d | 2014-05-13 A | 2014-05-20 A |  | 100% |  | Facu | 104h | 104h |
| 21 | 1.5.1 | Identificar, clasificar y priorizar riesgos | manual | 3d | 2014-05-13 A | 2014-05-15 A |  | 100% |  | Facu | 24h | 24h |
| 22 | 1.5.2 | Realizar plan mitigación | manual | 2d | 2014-05-16 A | 2014-05-19 A | 21 | 100% |  | Facu | 16h | 16h |
| 23 | 1.5.3 | Realizar plan de contingencia | manual | 2d | 2014-05-16 A | 2014-05-19 A | 21 | 100% |  | Facu | 16h | 16h |
| 24 | 1.6 | **Realizar Plan de Métricas** |  | 7d | 2014-05-20 A | 2014-05-26 A |  | 100% |  | Paula | 168h | 168h |
| 25 | 1.6.1 | Identificar metricas | manual | 7d | 2014-05-20 A | 2014-05-26 A |  | 100% |  | Paula | 56h | 56h |
| 26 | 1.6.2 | Definir responsables y método de medicion | manual | 7d | 2014-05-20 A | 2014-05-26 A |  | 100% |  | Paula | 56h | 56h |

| ID | WBS | Task | Type | Duration | Start | Finish | Predecessors | Complete | Actual finish | Constraint | Resources | Work | Actual work |
| --- | --- | --- | --- | --- | --- | --- | --- | --- | --- | --- | --- | --- | --- |
| 27 | 1.7 | **Realizar Plan de Testing** |  | 9d | 2014-05-20 A | 2014-05-28 A |  | 100% |  |  | Paula; Florencia | 232h | 232h |
| 28 | 1.7.1 | Definir tipos de pruebas |  | 7d | 2014-05-20 A | 2014-05-28 A |  | 100% |  |  | Paula | 56h | 56h |
| 29 | 1.7.2 | Definir estrategia de prueba |  | 7d | 2014-05-20 A | 2014-05-28 A |  | 100% |  |  | Paula | 56h | 56h |
| 30 | 1.7.3 | Definir nivel de cobertura |  | 7d | 2014-05-20 A | 2014-05-28 A |  | 100% |  |  | Paula | 56h | 56h |
| 31 | 1.7.4 | Correcciones | manual | 1d | 2014-05-24 A | 2014-05-24 A |  | 100% |  |  | Florencia | 8h | 8h |
| 32 | 1.8 | Analizar Impacto Ambiental | manual | 7d | 2014-05-20 A | 2014-05-26 A |  | 100% |  |  | Antonio; Facu; Florencia; Paula | 224h | 224h |
| 33 | 1.9 | **Realizar Presentación de Estudio Inicial** |  | 7d | 2014-05-19 A | 2014-05-25 | 12 | 100% | 2014-05-27 |  | Antonio; Facu; Florencia; Paula | 448h | 448h |
| 34 | 1.9.1 | Preparar presentación |  | 3d | 2014-05-19 A | 2014-05-21 A |  | 100% |  |  | Antonio; Facu; Florencia; Paula | 96h | 96h |
| 35 | 1.9.2 | Elaborar presentación |  | 3d | 2014-05-22 A | 2014-05-24 A | 34 | 100% |  |  | Antonio; Facu; Florencia; Paula | 96h | 96h |
| 36 | 1.9.3 | Exponer |  | 1d | 2014-05-27 A | 2014-05-27 A |  | 100% |  | start no earlier than 2014-05-27 | Antonio; Facu; Florencia; Paula | 32h | 32h |
| 37 | 1.10 | **Preparar Product Backlog** |  | 6d | 2014-05-29 A | 2014-06-03 A | 33, 32, 27, 24 | 100% |  |  | Antonio; Paula | 96h | 96h |
| 38 | 1.10.1 | Identificar historias de usuario |  | 4d | 2014-05-29 A | 2014-06-01 A |  | 100% |  |  |  |  |  |
| 39 | 1.10.2 | Priorizar historias de usuario |  | 4d | 2014-05-29 A | 2014-06-01 A |  | 100% |  |  |  |  |  |
| 40 | 1.10.3 | Estimar historias de usuario |  | 4d | 2014-05-29 A | 2014-06-01 A |  | 100% |  |  |  |  |  |
| 41 | 1.11 | **Realizar ERS** |  | 3d | 2014-05-29 A | 2014-05-31 A | 33, 32, 27, 24 | 100% |  |  | Antonio; Facu; Florencia; Paula | 96h | 96h |
| 42 | 1.11.1 | Entrevistar expertos en dominio |  | 3d | 2014-05-29 A | 2014-05-31 A |  | 100% |  |  |  |  |  |
| 43 | 1.11.2 | Identificar funcionalidades |  | 3d | 2014-05-29 A | 2014-05-31 A |  | 100% |  |  |  |  |  |
| 44 | 1.11.3 | Especificar funcionalidades |  | 3d | 2014-05-29 A | 2014-05-31 A |  | 100% |  |  |  |  |  |
| 45 | 1.11.4 | Definir reglas de negocio |  | 3d | 2014-05-29 A | 2014-05-31 A |  | 100% |  |  |  |  |  |
| 46 | 1.12 | **Definir Metodología y Herramientas de Trabajo** |  | 1d | 2014-06-01 A | 2014-06-01 A | 41 | 100% |  |  | Antonio; Facu; Florencia; Paula | 32h | 32h |
| 47 | 1.12.1 | Definir y preparar entorno de trabajo |  | 1d | 2014-06-01 A | 2014-06-01 A |  | 100% |  |  |  |  |  |
| 48 | 1.12.2 | Definir ciclo de vida del sw |  | 1d | 2014-06-01 A | 2014-06-01 A |  | 100% |  |  |  |  |  |
| 49 | 2 | **Sprint 1** |  | 22d | 2014-06-07 A | 2014-06-28 A | 1 | 100% |  |  |  | 1504h | 1504h |
| 50 | 2.1 | Realizar Sprint Planning | manual | 1d | 2014-06-07 A | 2014-06-07 A |  | 100% |  |  | Antonio; Facu; Florencia; Paula | 32h | 32h |
| 51 | 2.2 | Investigar tecnologías de desarrollo | manual | 22d | 2014-06-07 A | 2014-06-28 A |  | 100% |  |  | Facu; Paula | 352h | 352h |
| 52 | 2.3 | Investigar Algoritmos de Generación de fixture | manual | 22d | 2014-06-07 A | 2014-06-28 A |  | 100% |  |  | Antonio; Florencia | 352h | 352h |
| 53 | 2.4 | Analizar y Especificar los requerimientos | manual | 8d | 2014-06-07 A | 2014-06-14 A |  | 100% |  |  | Antonio; Florencia | 128h | 128h |

| ID | WBS | Task | Type | Duration | Start | Finish | Predecessors | Complete | Actual finish | Constraint | Resources | Work | Actual work |
| --- | --- | --- | --- | --- | --- | --- | --- | --- | --- | --- | --- | --- | --- |
| 54 | 2.5 | **Diseñar Solución** |  | 1d | 2014-06-14 A | 2014-06-14 A |  | 100% |  |  |  |  |  |
| 55 | 2.5.1 | Actualizar modelos existentes | manual | 1d | 2014-06-14 A | 2014-06-14 A |  | 100% |  |  |  |  |  |
| 56 | 2.5.2 | Crear nuevos modelos | manual | 1d | 2014-06-14 A | 2014-06-14 A |  | 100% |  |  |  |  |  |
| 57 | 2.6 | Desarrollar | manual | 6d | 2014-06-21 A | 2014-06-26 A |  | 100% |  |  | Antonio; Facu; Paula | 144h | 144h |
| 58 | 2.7 | Diseño de UI | manual | 11d | 2014-06-14 A | 2014-06-24 A |  | 100% |  |  | Facu | 88h | 88h |
| 59 | 2.8 | Testear | manual | 3d | 2014-06-26 A | 2014-06-28 A |  | 100% |  |  | Paula | 24h | 24h |
| 60 | 2.9 | Gestionar cambios | manual | 22d | 2014-06-07 A | 2014-06-28 A |  | 100% |  |  | Florencia | 176h | 176h |
| 61 | 2.10 | Realizar seguimiento y control de riesgos | manual | 22d | 2014-06-07 A | 2014-06-28 A |  | 100% |  |  | Facu | 176h | 176h |
| 62 | 2.11 | Realizar Sprint Review | manual | 1d | 2014-06-28 A | 2014-06-28 A |  | 100% |  |  | Antonio; Facu; Florencia; Paula | 32h | 32h |
| 63 | 3 | Realizar reunión retrospectiva |  | 1d | 2014-06-28 A | 2014-06-28 A |  | 100% |  | start no earlier than 2014-06-28 |  |  |  |
| 64 | 4 | **Sprint 2** |  | 22d | 2014-06-28 A | 2014-07-19 | 63 | 100% | 2014-06-28 |  |  |  |  |
| 65 | 4.1 | Realizar Sprint Planning | manual | 1d | 2014-06-28 A | 2014-06-28 A |  | 100% |  |  |  |  |  |
| 66 | 4.2 | Analizar y Especificar los requerimientos | manual | 1d | 2014-06-28 A | 2014-06-28 A |  | 100% |  |  |  |  |  |
| 67 | 4.3 | **Diseñar Solución** |  | 1d? | 2014-06-28 A | 2014-06-28 A |  | 100% |  |  |  |  |  |
| 68 | 4.3.1 | Actualizar modelos existentes | manual | 1d | 2014-06-28 A | 2014-06-28 A |  | 100% |  |  |  |  |  |
| 69 | 4.3.2 | Crear nuevos modelos | manual | 1d | 2014-06-28 A | 2014-06-28 A |  | 100% |  |  |  |  |  |
| 70 | 4.4 | Desarrollar | manual | 1d | 2014-06-28 A | 2014-06-28 A |  | 100% |  |  |  |  |  |
| 71 | 4.5 | Testear | manual | 1d | 2014-06-28 A | 2014-06-28 A |  | 100% |  |  |  |  |  |
| 72 | 4.6 | Implementar | manual | 1d | 2014-06-28 A | 2014-06-28 A |  | 100% |  |  |  |  |  |
| 73 | 4.7 | Gestionar cambios | manual | 1d | 2014-06-28 A | 2014-06-28 A |  | 100% |  |  |  |  |  |
| 74 | 4.8 | Realizar seguimiento y control de riesgos | manual | 1d | 2014-06-28 A | 2014-06-28 A |  | 100% |  |  |  |  |  |
| 75 | 4.9 | Realizar Sprint Review | manual | 1d | 2014-06-28 A | 2014-06-28 A |  | 100% |  |  |  |  |  |
| 76 | 5 | Realizar reunión retrospectiva |  | 1d | 2014-07-19 A | 2014-07-19 A |  | 100% |  | start no earlier than 2014-07-19 |  |  |  |
| 77 | 6 | **Sprint 3** |  | 22d | 2014-07-19 A | 2014-08-09 | 76 | 100% | 2014-07-19 |  |  |  |  |
| 78 | 6.1 | Realizar Sprint Planning | manual | 1d | 2014-07-19 A | 2014-07-19 A |  | 100% |  |  |  |  |  |
| 79 | 6.2 | Analizar y Especificar los requerimientos | manual | 1d | 2014-07-19 A | 2014-07-19 A |  | 100% |  |  |  |  |  |

| ID | WBS | Task | Type | Duration | Start | Finish | Predecessors | Complete | Remaining | Actual finish | Constraint | Resources | Work | Actual work |
| --- | --- | --- | --- | --- | --- | --- | --- | --- | --- | --- | --- | --- | --- | --- |
| 80 | 6.3 | **Diseñar Solución** |  | 1d? | 2014-07-19 A | 2014-07-19 A |  | 100% |  |  |  |  |  |  |
| 81 | 6.3.1 | Actualizar modelos existentes | manual | 1d | 2014-07-19 A | 2014-07-19 A |  | 100% |  |  |  |  |  |  |
| 82 | 6.3.2 | Crear nuevos modelos | manual | 1d | 2014-07-19 A | 2014-07-19 A |  | 100% |  |  |  |  |  |  |
| 83 | 6.4 | Desarrollar | manual | 1d | 2014-07-19 A | 2014-07-19 A |  | 100% |  |  |  |  |  |  |
| 84 | 6.5 | Testear | manual | 1d | 2014-07-19 A | 2014-07-19 A |  | 100% |  |  |  |  |  |  |
| 85 | 6.6 | Implementar | manual | 1d | 2014-07-19 A | 2014-07-19 A |  | 100% |  |  |  |  |  |  |
| 86 | 6.7 | Gestionar cambios | manual | 1d | 2014-07-19 A | 2014-07-19 A |  | 100% |  |  |  |  |  |  |
| 87 | 6.8 | Realizar seguimiento y control de riesgos | manual | 1d | 2014-07-19 A | 2014-07-19 A |  | 100% |  |  |  |  |  |  |
| 88 | 6.9 | Realizar Sprint Review | manual | 1d | 2014-07-19 A | 2014-07-19 A |  | 100% |  |  |  |  |  |  |
| 89 | 7 | Realizar reunión retrospectiva |  | 1d | 2014-08-09 A | 2014-08-09 A |  | 100% |  |  | start no earlier than 2014-08-09 |  |  |  |
| 90 | 8 | **Sprint 4** |  | 21d | 2014-08-09 A | 2014-08-30 | 89 | 80% | 4.29d |  |  |  | 3088h | 1251.73h |
| 91 | 8.1 | Realizar Sprint Planning | manual | 1d | 2014-08-09 A | 2014-08-10 A |  | 100% |  |  |  | Antonio; Facu; Florencia; Paula | 32h | 32h |
| 92 | 8.2 | Investigar Algoritmos de Generación de fixture | manual | 1d | 2014-08-09 A | 2014-08-10 |  | 90% | 0.1d |  |  | Antonio; Florencia | 16h | 14.4h |
| 93 | 8.3 | **Administrar Canchas** |  | 21d | 2014-08-09 A | 2014-08-30 A |  | 100% |  |  |  | Paula | 168h | 168h |
| 94 | 8.3.1 | **Registrar Cancha** |  | 21d | 2014-08-09 A | 2014-08-30 |  | 100% |  | 2014-08-10 |  |  |  |  |
| 95 | 8.3.1.1 | Desarrollo | manual | 1d | 2014-08-09 A | 2014-08-10 A |  | 100% |  |  |  |  |  |  |
| 96 | 8.3.1.2 | Testing | manual | 1d | 2014-08-09 A | 2014-08-10 A |  | 100% |  |  |  |  |  |  |
| 97 | 8.3.2 | **Modificar Cancha** |  | 21d | 2014-08-09 A | 2014-08-30 |  | 100% |  | 2014-08-10 |  |  |  |  |
| 98 | 8.3.2.1 | Desarrollo | manual | 1d | 2014-08-09 A | 2014-08-10 A |  | 100% |  |  |  |  |  |  |
| 99 | 8.3.2.2 | Testing | manual | 1d | 2014-08-09 A | 2014-08-10 A |  | 100% |  |  |  |  |  |  |
| 100 | 8.3.3 | **Eliminar Cancha** |  | 21d | 2014-08-09 A | 2014-08-30 |  | 100% |  | 2014-08-10 |  |  |  |  |
| 101 | 8.3.3.1 | Desarrollo | manual | 1d | 2014-08-09 A | 2014-08-10 A |  | 100% |  |  |  |  |  |  |
| 102 | 8.3.3.2 | Testing | manual | 1d | 2014-08-09 A | 2014-08-10 A |  | 100% |  |  |  |  |  |  |
| 103 | 8.3.4 | **Consultar Cancha** |  | 21d | 2014-08-09 A | 2014-08-30 |  | 100% |  | 2014-08-10 |  |  |  |  |
| 104 | 8.3.4.1 | Desarrollo | manual | 1d | 2014-08-09 A | 2014-08-10 A |  | 100% |  |  |  |  |  |  |
| 105 | 8.3.4.2 | Testing | manual | 1d | 2014-08-09 A | 2014-08-10 A |  | 100% |  |  |  |  |  |  |

| ID | WBS | Task | Type | Duration | Start | Finish | Complete | Actual finish | Resources | Work | Actual work |
| --- | --- | --- | --- | --- | --- | --- | --- | --- | --- | --- | --- |
| 106 | 8.4 | **Administrar Jugadores** |  | 21d | 2014-08-09 A | 2014-08-29 A | 100% |  | Paula; Facu | 336h | 336h |
| 107 | 8.4.1 | **Registrar Jugador** |  | 21d | 2014-08-09 A | 2014-08-29 | 100% | 2014-08-10 |  |  |  |
| 108 | 8.4.1.1 | Desarrollo | manual | 2d | 2014-08-09 A | 2014-08-10 A | 100% |  |  |  |  |
| 109 | 8.4.1.2 | Testing | manual | 2d | 2014-08-09 A | 2014-08-10 A | 100% |  |  |  |  |
| 110 | 8.4.2 | **Modificar Jugador** |  | 21d | 2014-08-09 A | 2014-08-29 | 100% | 2014-08-10 |  |  |  |
| 111 | 8.4.2.1 | Desarrollo | manual | 2d | 2014-08-09 A | 2014-08-10 A | 100% |  |  |  |  |
| 112 | 8.4.2.2 | Testing | manual | 1d | 2014-08-09 A | 2014-08-09 A | 100% |  |  |  |  |
| 113 | 8.4.3 | **Eliminar Jugador** |  | 21d | 2014-08-09 A | 2014-08-29 | 100% | 2014-08-09 |  |  |  |
| 114 | 8.4.3.1 | Desarrollo | manual | 1d | 2014-08-09 A | 2014-08-09 A | 100% |  |  |  |  |
| 115 | 8.4.3.2 | Testing | manual | 1d | 2014-08-09 A | 2014-08-09 A | 100% |  |  |  |  |
| 116 | 8.4.4 | Consultar Jugador | manual | 21d | 2014-08-09 A | 2014-08-29 A | 100% |  |  |  |  |
| 117 | 8.5 | **Administrar Equipos** |  | 21d | 2014-08-09 A | 2014-08-30 A | 100% |  | Paula; Facu | 168h | 168h |
| 118 | 8.5.1 | **Eliminar Equipo** |  | 21d | 2014-08-09 A | 2014-08-30 | 100% | 2014-08-10 |  |  |  |
| 119 | 8.5.1.1 | Desarrollo | manual | 1d | 2014-08-09 A | 2014-08-10 A | 100% |  |  |  |  |
| 120 | 8.5.1.2 | Testing | manual | 1d | 2014-08-09 A | 2014-08-10 A | 100% |  |  |  |  |
| 121 | 8.6 | **Administrar Árbitros** |  | 21d | 2014-08-09 A | 2014-08-29 A | 100% |  | Paula | 168h | 168h |
| 122 | 8.6.1 | **Registrar Árbitro** |  | 21d | 2014-08-09 A | 2014-08-29 | 100% | 2014-08-10 |  |  |  |
| 123 | 8.6.1.1 | Desarrollo | manual | 1d | 2014-08-10 A | 2014-08-10 A | 100% |  |  |  |  |
| 124 | 8.6.1.2 | Testing | manual | 1d | 2014-08-09 A | 2014-08-09 A | 100% |  |  |  |  |
| 125 | 8.6.2 | **Modificar Árbitro** |  | 1d | 2014-08-09 A | 2014-08-09 A | 100% |  |  |  |  |
| 126 | 8.6.2.1 | Desarrollo | manual | 1d | 2014-08-09 A | 2014-08-09 A | 100% |  |  |  |  |
| 127 | 8.6.2.2 | Testing | manual | 1d | 2014-08-09 A | 2014-08-09 A | 100% |  |  |  |  |
| 128 | 8.6.3 | **Eliminar Árbitro** |  | 1d | 2014-08-09 A | 2014-08-09 A | 100% |  |  |  |  |
| 129 | 8.6.3.1 | Desarrollo | manual | 1d | 2014-08-09 A | 2014-08-09 A | 100% |  |  |  |  |
| 130 | 8.6.3.2 | Testing | manual | 1d | 2014-08-09 A | 2014-08-09 A | 100% |  |  |  |  |

| ID | WBS | Task | Type | Duration | Start | Finish | Complete | Remaining | Resources | Work | Actual work |
| --- | --- | --- | --- | --- | --- | --- | --- | --- | --- | --- | --- |
| 131 | 8.6.4 | **Consultar Árbitro** |  | 1d | 2014-08-09 A | 2014-08-09 A | 100% |  |  |  |  |
| 132 | 8.6.4.1 | Desarrollo | manual | 1d | 2014-08-09 A | 2014-08-09 A | 100% |  |  |  |  |
| 133 | 8.6.4.2 | Testing | manual | 1d | 2014-08-09 A | 2014-08-09 A | 100% |  |  |  |  |
| 134 | 8.7 | **Modificar Usuario** |  | 21d | 2014-08-09 A | 2014-08-30 A | 100% |  | Florencia | 168h | 168h |
| 135 | 8.7.1 | Desarrollo | manual | 1d | 2014-08-09 A | 2014-08-10 A | 100% |  |  |  |  |
| 136 | 8.7.2 | Testing | manual | 1d | 2014-08-09 A | 2014-08-10 A | 100% |  |  |  |  |
| 137 | 8.8 | **Administrar Edición** |  | 21d | 2014-08-09 A | 2014-08-30 | 26% | 15.63d | Antonio; Facu; Florencia; Paula | 1392h | 69.33h |
| 138 | 8.8.1 | **Eliminar Edición No Comenzada** |  | 21d | 2014-08-10 | 2014-08-30 |  |  | Antonio; Facu; Florencia; Paula | 680h |  |
| 139 | 8.8.1.1 | Desarrollo | manual | 1d? | 2014-08-10 | 2014-08-10 |  |  | Paula | 8h |  |
| 140 | 8.8.1.2 | Testing | manual | 1d? | 2014-08-10 | 2014-08-10 |  |  |  |  |  |
| 141 | 8.8.2 | **Modificar Edición No Comenzada** |  | 21d | 2014-08-09 | 2014-08-30 |  |  |  | 8h |  |
| 142 | 8.8.2.1 | Desarrollo | manual | 1d? | 2014-08-09 | 2014-08-10 |  |  | Paula | 8h |  |
| 143 | 8.8.2.2 | Testing | manual | 1d? | 2014-08-09 | 2014-08-10 |  |  |  |  |  |
| 144 | 8.8.3 | **Registrar Configuraciones** |  | 21d | 2014-08-09 A | 2014-08-30 | 50% | 10.5d |  | 16h | 16h |
| 145 | 8.8.3.1 | Desarrollo | manual | 1d | 2014-08-09 A | 2014-08-10 A | 100% |  | Antonio; Florencia | 16h | 16h |
| 146 | 8.8.3.2 | Testing | manual | 1d? | 2014-08-09 | 2014-08-10 |  |  |  |  |  |
| 147 | 8.8.4 | **Asignar equipos a la edición** |  | 21d | 2014-08-09 A | 2014-08-30 | 43% | 11.9d |  | 16h | 10.4h |
| 148 | 8.8.4.1 | Diseño de Interfaz | manual | 1d? | 2014-08-09 A | 2014-08-10 | 80% | 0.2d? | Facu | 8h | 6.4h |
| 149 | 8.8.4.2 | Desarrollar | manual | 1d? | 2014-08-09 A | 2014-08-10 | 50% | 0.5d? | Paula | 8h | 4h |
| 150 | 8.8.4.3 | Testear | manual | 1d? | 2014-08-09 | 2014-08-10 |  |  |  |  |  |
| 151 | 8.9 | **Generación de Fixture Todos contra todos** |  | 21d | 2014-08-09 A | 2014-08-30 | 21% | 16.5d | Antonio; Facu; Florencia | 576h | 128h |
| 152 | 8.9.1 | **Registrar Fase** |  | 21d | 2014-08-09 A | 2014-08-30 | 38% | 13.12d |  | 40h | 20h |
| 153 | 8.9.1.1 | Diseño de solución | manual | 1d | 2014-08-09 A | 2014-08-10 A | 100% |  | Antonio; Florencia | 16h | 16h |
| 154 | 8.9.1.2 | Diseño de Interfaz | manual | 1d? | 2014-08-09 | 2014-08-10 |  |  | Antonio; Facu | 16h |  |
| 155 | 8.9.1.3 | Desarrollo | manual | 1d? | 2014-08-09 A | 2014-08-10 | 50% | 0.5d? | Florencia | 8h | 4h |
| 156 | 8.9.1.4 | Testing | manual | 1d? | 2014-08-09 | 2014-08-10 |  |  |  |  |  |

| ID | WBS | Task | Type | Duration | Start | Finish | Predecessors | Total slack | Free slack | Constraint | Resources | Work |
| --- | --- | --- | --- | --- | --- | --- | --- | --- | --- | --- | --- | --- |
| 157 | 8.9.2 | **Mostrar Fixture** |  | 21d | 2014-08-10 | 2014-08-30 |  |  |  |  |  | 32h |
| 158 | 8.9.2.1 | Diseño de Interfaz | manual | 1d? | 2014-08-10 | 2014-08-10 |  |  |  |  | Antonio; Facu | 16h |
| 159 | 8.9.2.2 | Desarrollo | manual | 1d? | 2014-08-10 | 2014-08-10 |  |  |  |  | Florencia; Paula | 16h |
| 160 | 8.9.2.3 | Testing |  | 1d | 2014-08-10 | 2014-08-10 |  | 20d |  |  |  |  |
| 161 | 8.10 | Realizar Sprint Review |  | 1d | 2014-08-30 | 2014-08-30 |  | 231d |  | finish no earlier than 2014-08-30 | Antonio; Facu; Florencia; Paula | 32h |
| 162 | 8.11 | Realizar reunión retrospectiva |  | 1d | 2014-08-30 | 2014-08-30 |  | -1d | 0d | start no earlier than 2014-08-30 | Antonio; Facu; Florencia; Paula | 32h |
| 163 | 9 | **Sprint 5** |  | 22d | 2014-08-30 | 2014-09-20 | 162 |  |  |  |  |  |
| 164 | 9.1 | Realizar Sprint Planning | manual | 1d | 2014-08-30 | 2014-08-30 |  |  |  |  |  |  |
| 165 | 9.2 | Administrar Jugadores | manual | 1d | 2014-08-30 | 2014-08-30 |  |  |  |  |  |  |
| 166 | 9.3 | Administrar Partidos | manual | 2d? | 2014-08-30 | 2014-08-31 |  |  |  |  |  |  |
| 167 | 9.4 | Generación de Fixture Eliminatorias | manual | 1d? | 2014-08-30 | 2014-08-30 |  |  |  |  |  |  |
| 168 | 9.5 | Generación de Fixture Eliminatorias Ida y Vuelta | manual | 1d? | 2014-08-30 | 2014-08-30 |  |  |  |  |  |  |
| 169 | 9.6 | Dar Baja Lógica de Campeonato | manual | 1d | 2014-08-30 | 2014-08-30 |  |  |  |  |  |  |
| 170 | 9.7 | Modificación de datos de un usuario | manual | 1d? | 2014-08-30 | 2014-08-30 |  |  |  |  |  |  |
| 171 | 9.8 | **Administración de Partidos** |  | 1d? | 2014-08-30 | 2014-08-30 |  |  |  |  |  |  |
| 172 | 9.8.1 | Registrar Resultados del Partido | manual | 1d? | 2014-08-30 | 2014-08-30 |  |  |  |  |  |  |
| 173 | 9.8.2 | Registrar Tarjetas por Partido | manual | 1d? | 2014-08-30 | 2014-08-30 |  |  |  |  |  |  |
| 174 | 9.8.3 | Registrar Momento de Gol y Jugador | manual | 1d? | 2014-08-30 | 2014-08-30 |  |  |  |  |  |  |
| 175 | 9.8.4 | Registrar penales |  | 1d? | 2014-08-30 | 2014-08-30 |  | 0d |  |  |  |  |
| 176 | 10 | Corrección de Bugs | manual | 1d? | 2014-05-03 | 2014-05-03 |  |  |  |  |  |  |
| 177 | 11 | Realizar Sprint Review | manual | 1d? | 2014-05-03 | 2014-05-03 |  |  |  |  |  |  |
| 178 | 12 | Realizar reunión retrospectiva |  | 1d | 2014-05-03 | 2014-05-03 |  | 350d |  |  |  |  |
| 179 | 13 | **Sprint 6** |  | 22d | 2014-09-20 | 2014-10-11 | 175 |  |  |  |  |  |
| 180 | 13.1 | Realizar Sprint Planning | manual | 1d | 2014-09-20 | 2014-09-20 |  |  |  |  |  |  |
| 181 | 13.2 | Corrección de Bugs | manual | 1d | 2014-09-20 | 2014-09-20 |  |  |  |  |  |  |
| 182 | 14 | Realizar reunión retrospectiva |  | 1d | 2015-01-03 | 2015-01-03 |  | -85d | 0d | start no earlier than 2015-01-03 |  |  |

| ID | WBS | Task | Type | Duration | Start | Finish | Predecessors | Total slack | Free slack | Constraint |
| --- | --- | --- | --- | --- | --- | --- | --- | --- | --- | --- |
| 183 | 15 | **Sprint 7** |  | 22d | 2014-10-11 | 2014-11-01 | 182 |  |  |  |
| 184 | 15.1 | Realizar Sprint Planning | manual | 1d | 2014-10-11 | 2014-10-11 |  |  |  |  |
| 185 | 15.2 | Armar Manual de usuario | manual | 1d | 2014-10-11 | 2014-10-11 |  |  |  |  |
| 186 | 15.3 | Realizar Sprint Review | manual | 1d | 2014-10-11 | 2014-10-11 |  |  |  |  |
| 187 | 16 | Realizar reunión retrospectiva |  | 1d | 2015-01-10 | 2015-01-10 |  | -71d | 0d | start no earlier than 2015-01-10 |
| 188 | 17 | **Sprint 8** |  | 22d | 2014-11-01 | 2014-11-22 | 187 |  |  |  |
| 189 | 17.1 | Realizar Sprint Planning | manual | 1d | 2014-11-01 | 2014-11-01 |  |  |  |  |
| 190 | 17.2 | Analizar y Especificar los requerimientos | manual | 1d | 2014-11-01 | 2014-11-01 |  |  |  |  |
| 191 | 17.3 | **Diseñar Solución** |  | 1d? | 2014-11-01 | 2014-11-01 |  |  |  |  |
| 192 | 17.3.1 | Actualizar modelos existentes | manual | 1d | 2014-11-01 | 2014-11-01 |  |  |  |  |
| 193 | 17.3.2 | Crear nuevos modelos | manual | 1d | 2014-11-01 | 2014-11-01 |  |  |  |  |
| 194 | 17.4 | Desarrollar | manual | 1d | 2014-11-01 | 2014-11-01 |  |  |  |  |
| 195 | 17.5 | Testear | manual | 1d | 2014-11-01 | 2014-11-01 |  |  |  |  |
| 196 | 17.6 | Implementar | manual | 1d | 2014-11-01 | 2014-11-01 |  |  |  |  |
| 197 | 17.7 | Gestionar cambios | manual | 1d | 2014-11-01 | 2014-11-01 |  |  |  |  |
| 198 | 17.8 | Realizar seguimiento y control de riesgos | manual | 1d | 2014-11-01 | 2014-11-01 |  |  |  |  |
| 199 | 17.9 | Realizar Sprint Review | manual | 1d | 2014-11-01 | 2014-11-01 |  |  |  |  |
| 200 | 18 | Realizar reunión retrospectiva |  | 1d | 2015-03-11 | 2015-03-11 | 188 | -110d | 0d | start no earlier than 2015-03-11 |
| 201 | 19 | **Sprint 9** |  | 22d | 2014-11-22 | 2014-12-13 | 200 |  |  |  |
| 202 | 19.1 | Realizar Sprint Planning | manual | 1d | 2014-11-22 | 2014-11-22 |  |  |  |  |
| 203 | 19.2 | Analizar y Especificar los requerimientos | manual | 1d | 2014-11-22 | 2014-11-22 |  |  |  |  |
| 204 | 19.3 | **Diseñar Solución** |  | 1d? | 2014-11-22 | 2014-11-22 |  |  |  |  |
| 205 | 19.3.1 | Actualizar modelos existentes | manual | 1d | 2014-11-22 | 2014-11-22 |  |  |  |  |
| 206 | 19.3.2 | Crear nuevos modelos | manual | 1d | 2014-11-22 | 2014-11-22 |  |  |  |  |
| 207 | 19.4 | Desarrollar | manual | 1d | 2014-11-22 | 2014-11-22 |  |  |  |  |
| 208 | 19.5 | Testear | manual | 1d | 2014-11-22 | 2014-11-22 |  |  |  |  |
| 209 | 19.6 | Implementar | manual | 1d | 2014-11-22 | 2014-11-22 |  |  |  |  |
| 210 | 19.7 | Gestionar cambios | manual | 1d | 2014-11-22 | 2014-11-22 |  |  |  |  |
| 211 | 19.8 | Realizar seguimiento y control de riesgos | manual | 1d | 2014-11-22 | 2014-11-22 |  |  |  |  |
| 212 | 19.9 | Realizar Sprint Review | manual | 1d | 2014-11-22 | 2014-11-22 |  |  |  |  |
| 213 | 20 | Realizar reunión retrospectiva |  | 1d | 2014-05-03 | 2014-05-03 |  | 223d |  |  |

| ID | WBS | Task | Type | Duration | Start | Finish | Predecessors | Total slack | Free slack | Constraint |
| --- | --- | --- | --- | --- | --- | --- | --- | --- | --- | --- |
| 214 | 21 | **Sprint 10** |  | 22d | 2014-12-13 | 2015-01-03 | 213 |  |  |  |
| 215 | 21.1 | Realizar Sprint Planning | manual | 1d | 2014-12-13 | 2014-12-13 |  |  |  |  |
| 216 | 21.2 | Analizar y Especificar los requerimientos | manual | 1d | 2014-12-13 | 2014-12-13 |  |  |  |  |
| 217 | 21.3 | **Diseñar Solución** |  | 1d | 2014-12-13 | 2014-12-13 |  | 0d |  |  |
| 218 | 21.3.1 | Actualizar modelos existentes | manual | 1d | 2014-12-13 | 2014-12-13 |  |  |  |  |
| 219 | 21.3.2 | Crear nuevos modelos | manual | 1d | 2014-12-13 | 2014-12-13 |  |  |  |  |
| 220 | 21.4 | Desarrollar | manual | 1d | 2014-12-13 | 2014-12-13 |  |  |  |  |
| 221 | 21.5 | Testear | manual | 1d | 2014-12-13 | 2014-12-13 |  |  |  |  |
| 222 | 21.6 | Implementar | manual | 1d | 2014-12-13 | 2014-12-13 |  |  |  |  |
| 223 | 21.7 | Gestionar cambios | manual | 1d | 2014-12-13 | 2014-12-13 |  |  |  |  |
| 224 | 21.8 | Realizar seguimiento y control de riesgos | manual | 1d | 2014-12-13 | 2014-12-13 |  |  |  |  |
| 225 | 21.9 | Realizar Sprint Review | manual | 1d | 2014-12-13 | 2014-12-13 |  |  |  |  |
| 226 | 22 | Realizar reunión retrospectiva |  | 1d | 2015-01-03 | 2015-01-03 |  | -1d | 0d | start no earlier than 2015-01-03 |
| 227 | 23 | **Sprint 11** |  | 22d | 2015-01-03 | 2015-01-24 | 226 |  |  |  |
| 228 | 23.1 | Realizar Sprint Planning | manual | 1d | 2015-01-03 | 2015-01-03 |  |  |  |  |
| 229 | 23.2 | Analizar y Especificar los requerimientos | manual | 1d | 2015-01-03 | 2015-01-03 |  |  |  |  |
| 230 | 23.3 | Diseñar Solución | manual | 1d | 2015-01-03 | 2015-01-03 |  |  |  |  |
| 231 | 23.4 | Desarrollar | manual | 1d | 2015-01-03 | 2015-01-03 |  |  |  |  |
| 232 | 23.5 | Testear | manual | 1d | 2015-01-03 | 2015-01-03 |  |  |  |  |
| 233 | 23.6 | Implementar | manual | 1d | 2015-01-03 | 2015-01-03 |  |  |  |  |
| 234 | 23.7 | Gestionar cambios | manual | 1d | 2015-01-03 | 2015-01-03 |  |  |  |  |
| 235 | 23.8 | Realizar seguimiento y control de riesgos | manual | 1d | 2015-01-03 | 2015-01-03 |  |  |  |  |
| 236 | 23.9 | Realizar Sprint Review | manual | 1d | 2015-01-03 | 2015-01-03 |  |  |  |  |
| 237 | 24 | Realizar reunión retrospectiva | manual | 1d | 2015-01-24 | 2015-01-24 |  |  |  |  |

| ID | WBS | Task | Type | Duration | Start | Finish | Predecessors |
| --- | --- | --- | --- | --- | --- | --- | --- |
| 238 | 25 | **Sprint 12** |  | 21d | 2015-01-24 | 2015-02-13 | 237 |
| 239 | 25.1 | Realizar Sprint Planning | manual | 1d | 2015-01-24 | 2015-01-24 |  |
| 240 | 25.2 | Analizar y Especificar los requerimientos | manual | 1d | 2015-01-24 | 2015-01-24 |  |
| 241 | 25.3 | Diseñar Solución | manual | 1d | 2015-01-24 | 2015-01-24 |  |
| 242 | 25.4 | Desarrollar | manual | 1d | 2015-01-24 | 2015-01-24 |  |
| 243 | 25.5 | Testear | manual | 1d | 2015-01-24 | 2015-01-24 |  |
| 244 | 25.6 | Implementar | manual | 1d | 2015-01-24 | 2015-01-24 |  |
| 245 | 25.7 | Gestionar cambios | manual | 1d | 2015-01-24 | 2015-01-24 |  |
| 246 | 25.8 | Realizar seguimiento y control de riesgos | manual | 1d | 2015-01-24 | 2015-01-24 |  |
| 247 | 25.9 | Realizar Sprint Review | manual | 1d | 2015-01-24 | 2015-01-24 |  |
| 248 | 26 | Realizar reunión retrospectiva | manual | 1d | 2015-02-15 | 2015-02-15 |  |
| 249 | 27 | **Sprint 13** |  | 21d | 2015-02-15 | 2015-03-07 | 248 |
| 250 | 27.1 | Realizar Sprint Planning | manual | 1d | 2015-02-15 | 2015-02-15 |  |
| 251 | 27.2 | Analizar y Especificar los requerimientos | manual | 1d | 2015-02-15 | 2015-02-15 |  |
| 252 | 27.3 | Diseñar Solución | manual | 1d | 2015-02-15 | 2015-02-15 |  |
| 253 | 27.4 | Desarrollar | manual | 1d | 2015-02-15 | 2015-02-15 |  |
| 254 | 27.5 | Testear | manual | 1d | 2015-02-15 | 2015-02-15 |  |
| 255 | 27.6 | Implementar | manual | 1d | 2015-02-15 | 2015-02-15 |  |
| 256 | 27.7 | Gestionar cambios | manual | 1d | 2015-02-15 | 2015-02-15 |  |
| 257 | 27.8 | Realizar seguimiento y control de riesgos | manual | 1d | 2015-02-15 | 2015-02-15 |  |
| 258 | 27.9 | Realizar Sprint Review | manual | 1d | 2015-02-15 | 2015-02-15 |  |
| 259 | 28 | Realizar reunión retrospectiva | manual | 1d | 2015-03-07 | 2015-03-07 |  |
| 260 | 29 | **Sprint 14** |  | 22d | 2015-03-07 | 2015-03-28 | 259 |
| 261 | 29.1 | Realizar Sprint Planning | manual | 1d | 2015-03-07 | 2015-03-07 |  |
| 262 | 29.2 | Analizar y Especificar los requerimientos | manual | 1d | 2015-03-07 | 2015-03-07 |  |
| 263 | 29.3 | Diseñar Solución | manual | 1d | 2015-03-07 | 2015-03-07 |  |
| 264 | 29.4 | Desarrollar | manual | 1d | 2015-03-07 | 2015-03-07 |  |
| 265 | 29.5 | Testear | manual | 1d | 2015-03-07 | 2015-03-07 |  |
| 266 | 29.6 | Implementar | manual | 1d | 2015-03-07 | 2015-03-07 |  |
| 267 | 29.7 | Gestionar cambios | manual | 1d | 2015-03-07 | 2015-03-07 |  |
| 268 | 29.8 | Realizar seguimiento y control de riesgos | manual | 1d | 2015-03-07 | 2015-03-07 |  |
| 269 | 29.9 | Realizar Sprint Review | manual | 1d | 2015-03-07 | 2015-03-07 |  |
| 270 | 30 | Realizar reunión retrospectiva | manual | 1d | 2015-03-28 | 2015-03-28 |  |

| ID | WBS | Task | Type | Duration | Start | Finish | Predecessors | Total slack |
| --- | --- | --- | --- | --- | --- | --- | --- | --- |
| 271 | 31 | **Sprint 15** |  | 22d | 2015-03-28 | 2015-04-18 | 270 |  |
| 272 | 31.1 | **Realizar Presentación Final** |  | 1d | 2015-03-28 | 2015-03-28 |  | 0d |
| 273 | 31.1.1 | Preparar presentación | manual | 1d | 2015-03-28 | 2015-03-28 |  |  |
| 274 | 31.1.2 | Elaborar presentación | manual | 1d | 2015-03-28 | 2015-03-28 |  |  |
| 275 | 31.1.3 | Exponer | manual | 1d | 2015-03-28 | 2015-03-28 |  |  |
